# 西安印钞厂(挣值分析）

Schedule from MS Project, 2001-07-01 to 2001-07-19, status date 2001-07-08, A marks actual dates.
西安火炬电脑公司

## Calendars

- 标准: Mon-Sun 08:00-12:00, 13:00-17:00.

## Schedule

| ID | Task | Duration | Start | Finish | Predecessors | Complete | Remaining | Total slack | Free slack | Constraint | Text1 |
| --- | --- | --- | --- | --- | --- | --- | --- | --- | --- | --- | --- |
| 1 | 设备保护 | 1d | 2001-07-01 A | 2001-07-01 A |  | 100% |  |  |  | start no earlier than 2001-07-01 | FS |
| 2 | 1段天棚搭架 | 2d | 2001-07-02 A | 2001-07-03 A | 1 | 100% |  |  |  | start no earlier than 2001-07-02 | FS |
| 3 | 2段天棚搭架 | 2d | 2001-07-04 A | 2001-07-05 A | 2 | 100% |  |  |  | start no earlier than 2001-07-04 | FS |
| 4 | 3段天棚搭架 | 2d | 2001-07-06 A | 2001-07-07 A | 3 | 100% |  |  |  | start no earlier than 2001-07-06 | FS |
| 5 | 1段天棚拆除 | 2d | 2001-07-04 A | 2001-07-05 A | 2 | 100% |  |  |  | start no earlier than 2001-07-04 | FS |
| 6 | 2段天棚拆除 | 2d | 2001-07-06 A | 2001-07-07 A | 5, 3 | 100% |  |  |  | start no earlier than 2001-07-06 | FS |
| 7 | 3段天棚拆除 | 2d | 2001-07-08 A | 2001-07-09 | 6, 4 | 75% | 0.5d | 1d | 0d | start no earlier than 2001-07-08 | FS |
| 8 | 1段天棚放线 | 2d | 2001-07-06 A | 2001-07-07 A | 5 | 100% |  |  |  | start no earlier than 2001-07-06 | FS |
| 9 | 2段天棚放线 | 2d | 2001-07-08 A | 2001-07-09 | 6, 8 | 85% | 0.3d | 1d | 0d | start no earlier than 2001-07-08 | FS |
| 10 | 3段天棚放线 | 1d | 2001-07-10 | 2001-07-10 | 7, 9 |  |  | 1d | 0d | start no earlier than 2001-07-10 | FS |
| 11 | 天龙骨安放 | 4d | 2001-07-11 | 2001-07-14 | 10 |  |  | 1d | 0d | start no earlier than 2001-07-11 | FS |
| 12 | 吸波材料铺设 | 4d | 2001-07-11 | 2001-07-14 | 10 |  |  | 1d | 0d | start no earlier than 2001-07-11 | FS |
| 13 | 天棚板安装 | 1d | 2001-07-15 | 2001-07-15 | 11, 12 |  |  | 1d | 0d | start no earlier than 2001-07-15 | FS |
| 14 | 拆架 | 2d | 2001-07-16 | 2001-07-17 | 13 |  |  | 1d |  | start no earlier than 2001-07-16 | FS |
| 15 | 墙面拆除 | 2d | 2001-07-02 A | 2001-07-03 A | 1 | 100% |  |  |  | start no earlier than 2001-07-02 | FS |
| 16 | 墙面放线 | 1d | 2001-07-04 A | 2001-07-04 A | 15 | 100% |  |  |  | start no earlier than 2001-07-04 | FS |
| 17 | 墙面龙骨 | 3d | 2001-07-05 A | 2001-07-07 A | 16 | 100% |  |  |  | start no earlier than 2001-07-05 | FS |
| 18 | 吸音材料 | 3d | 2001-07-05 A | 2001-07-07 A | 16 | 100% |  |  |  | start no earlier than 2001-07-05 | FS |
| 19 | 塑铝板墙面制作 | 11d | 2001-07-08 A | 2001-07-18 | 17, 18 | 40% | 6.6d | 0d |  | start no earlier than 2001-07-08 | FS |
| 20 | 竣工 | 1d | 2001-07-19 | 2001-07-19 | 19, 14 |  |  | 0d |  | start no earlier than 2001-07-19 |  |
