# 西安印钞厂

Schedule from MS Project, 2001-07-01 to 2001-07-19.
西安火炬电脑公司

## Calendars

- 标准: Mon-Sun 08:00-12:00, 13:00-17:00.

## Schedule

| ID | Task | Duration | Start | Finish | Predecessors | Total slack | Free slack | Constraint |
| --- | --- | --- | --- | --- | --- | --- | --- | --- |
| 1 | 设备保护 | 1d | 2001-07-01 | 2001-07-01 |  | 1d | 0d | start no earlier than 2001-07-01 |
| 2 | 1段天棚搭架 | 2d | 2001-07-02 | 2001-07-03 | 1 | 1d | 0d | start no earlier than 2001-07-02 |
| 3 | 2段天棚搭架 | 2d | 2001-07-04 | 2001-07-05 | 2 | 1d | 0d | start no earlier than 2001-07-04 |
| 4 | 3段天棚搭架 | 2d | 2001-07-06 | 2001-07-07 | 3 | 1d | 0d | start no earlier than 2001-07-06 |
| 5 | 1段天棚拆除 | 2d | 2001-07-04 | 2001-07-05 | 2 | 1d | 0d | start no earlier than 2001-07-04 |
| 6 | 2段天棚拆除 | 2d | 2001-07-06 | 2001-07-07 | 5, 3 | 1d | 0d | start no earlier than 2001-07-06 |
| 7 | 3段天棚拆除 | 2d | 2001-07-08 | 2001-07-09 | 6, 4 | 1d | 0d | start no earlier than 2001-07-08 |
| 8 | 1段天棚放线 | 2d | 2001-07-06 | 2001-07-07 | 5 | 1d | 0d | start no earlier than 2001-07-06 |
| 9 | 2段天棚放线 | 2d | 2001-07-08 | 2001-07-09 | 6, 8 | 1d | 0d | start no earlier than 2001-07-08 |
| 10 | 3段天棚放线 | 1d | 2001-07-10 | 2001-07-10 | 7, 9 | 1d | 0d | start no earlier than 2001-07-10 |
| 11 | 天龙骨安放 | 4d | 2001-07-11 | 2001-07-14 | 10 | 1d | 0d | start no earlier than 2001-07-11 |
| 12 | 吸波材料铺设 | 4d | 2001-07-12 | 2001-07-15 | 10 | 0d |  | start no earlier than 2001-07-12 |
| 13 | 天棚板安装 | 1d | 2001-07-16 | 2001-07-16 | 11, 12 | 0d |  | start no earlier than 2001-07-15 |
| 14 | 拆架 | 2d | 2001-07-17 | 2001-07-18 | 13 | 0d |  | start no earlier than 2001-07-16 |
| 15 | 墙面拆除 | 2d | 2001-07-02 | 2001-07-03 | 1 | 1d | 0d | start no earlier than 2001-07-02 |
| 16 | 墙面放线 | 1d | 2001-07-04 | 2001-07-04 | 15 | 1d | 0d | start no earlier than 2001-07-04 |
| 17 | 墙面龙骨 | 3d | 2001-07-05 | 2001-07-07 | 16 | 1d |  | start no earlier than 2001-07-05 |
| 18 | 吸音材料 | 3d | 2001-07-06 | 2001-07-08 | 16 | 0d |  | start no earlier than 2001-07-06 |
| 19 | 塑铝板墙面制作 | 10d | 2001-07-09 | 2001-07-18 | 17, 18 | 0d |  | start no earlier than 2001-07-08 |
| 20 | 竣工 | 1d | 2001-07-19 | 2001-07-19 | 19, 14 | 0d |  | start no earlier than 2001-07-19 |
